# NUS-ProjectPlan

How a schedule from MS Project changed from version to version. A marks actual dates.

## Version 1 (saved 2015-04-20, file NUS-ProjectPlan.mpp)

Note of the change: Added all the work till date on proposal

| ID | WBS | Task | Duration | Start | Finish | Predecessors | Complete | Total float | Constraint |
| --- | --- | --- | --- | --- | --- | --- | --- | --- | --- |
| 1 |  | start | 0d | 2015-04-13 | 2015-04-13 |  |  | 21d |  |
| 2 | 2 | **Overall** | 21d | 2015-04-13 A | 2015-05-11 |  | 14% | 0d |  |
| 3 | 2.1 | **Initiation** | 2d | 2015-04-15 A | 2015-04-17 |  | 99% | 17d |  |
| 4 |  | Project Kickoff | 0.5d | 2015-04-15 A | 2015-04-15 A |  | 100% |  | start no earlier than 2015-04-15 |
| 5 |  | PMP submission | 0d | 2015-04-17 | 2015-04-17 |  |  | 17d | start no earlier than 2015-04-17 |
| 6 | 2.2 | **Specification Confirmation** | 7d | 2015-04-13 A | 2015-04-21 |  | 36% | 14d |  |
| 7 |  | Requirement discussion | 5d | 2015-04-13 A | 2015-04-17 |  | 80% | 0d |  |
| 8 |  | Deployment Plan Review | 2d | 2015-04-20 | 2015-04-21 | 7 |  | 0d |  |
| 9 |  | look&feel guideline Review | 2d | 2015-04-20 | 2015-04-21 | 7 |  | 14d |  |
| 10 |  | Acceptance Test Review | 2d | 2015-04-20 | 2015-04-21 | 7 |  | 0d |  |
| 11 |  | signoff | 0d | 2015-04-21 | 2015-04-21 | 8, 10 |  | 0d |  |
| 12 | 2.3 | **Development** | 12d | 2015-04-13 A | 2015-04-28 |  | 19% | 9d |  |
| 13 |  | OOF integration | 10d | 2015-04-13 A | 2015-04-24 |  | 45% | 11d |  |
| 14 |  | delegation email integration | 7d | 2015-04-20 | 2015-04-28 | 13SS+5d |  | 9d |  |
| 15 |  | 2FA integration | 7d | 2015-04-20 | 2015-04-28 | 13SS+5d |  | 9d |  |
| 16 | 2.4 | **Training** | 5d | 2015-04-20 | 2015-04-24 |  |  | 11d |  |
| 17 |  | BPM Training | 5d | 2015-04-20 | 2015-04-24 |  |  | 11d | start no earlier than 2015-04-20 |
| 18 | 2.5 | **Install & Config (DEV)** | 6.75d | 2015-04-21 | 2015-04-30 | 11 |  | 0d |  |
| 19 |  | Dev InfraStructure readiness and Availability | 0d | 2015-04-21 | 2015-04-21 | 11 |  | 0d |  |
| 20 |  | dev env setup | 1d | 2015-04-22 | 2015-04-22 | 19 |  | 0d |  |
| 21 |  | Verify the Dev Environment (Oracle instance running, firewall ports, remote access information, Software Image with location) | 0.5d | 2015-04-23 | 2015-04-23 | 20 |  | 7.25d |  |
| 22 |  | Check VPN environment credentials and log into the Server | 0.5d | 2015-04-23 | 2015-04-23 | 21 |  | 7.25d |  |
| 23 |  | install and config system | 2d | 2015-04-24 | 2015-04-27 | 22 |  | 7.25d |  |
| 24 |  | Deploy the sample process/workflow | 0.25d | 2015-04-28 | 2015-04-28 | 23 |  | 7.25d |  |
| 25 |  | Dev Preparation and execution of Test Scenario and test cases | 1d | 2015-04-28 | 2015-04-29 | 24 |  | 7.25d |  |
| 26 |  | Dev Env Summary report and Installation documentation | 0.5d | 2015-04-29 | 2015-04-29 | 25 |  | 7.25d |  |
| 27 |  | env testing | 1d | 2015-04-29 | 2015-04-30 | 26 |  | 7.25d |  |
| 28 |  | sign off | 0d | 2015-04-30 | 2015-04-30 | 27 |  | 7.25d |  |
| 29 | 2.6 | **Install & Config (UAT)** | 8d | 2015-04-23 | 2015-05-04 |  |  | 0d |  |
| 30 |  | uat env setup | 1d | 2015-04-23 | 2015-04-23 | 20 |  | 0d |  |
| 31 |  | install and config system | 5d | 2015-04-24 | 2015-04-30 | 30 |  | 0d |  |
| 32 |  | env testing | 2d | 2015-05-01 | 2015-05-04 | 31 |  | 0d |  |
| 33 |  | sign off | 0d | 2015-05-04 | 2015-05-04 | 32 |  | 0d |  |
| 34 | 2.7 | **Install & Config (PROD)** | 8d | 2015-04-24 | 2015-05-05 |  |  | 4d |  |
| 35 |  | prod env setup | 1d | 2015-04-24 | 2015-04-24 | 30 |  | 6d |  |
| 36 |  | install and config system | 5d | 2015-04-27 | 2015-05-01 | 35 |  | 6d |  |
| 37 |  | env testing | 1d | 2015-05-05 | 2015-05-05 | 33 |  | 0d |  |
| 38 |  | sign off | 0d | 2015-05-05 | 2015-05-05 | 37 |  | 0d |  |
| 39 | 2.8 | **Acceptance Testing** | 4d | 2015-05-06 | 2015-05-11 |  |  | 0d |  |
| 40 |  | Acceptance testing | 2d | 2015-05-06 | 2015-05-07 | 38 |  | 0d |  |
| 41 |  | backup & recovery testing | 2d | 2015-05-08 | 2015-05-11 | 40 |  | 0d |  |
| 42 |  | Acceptance signoff | 0d | 2015-05-11 | 2015-05-11 | 41 |  | 0d |  |
| 43 |  | end | 0d | 2015-05-11 | 2015-05-11 | 2 |  | 0d |  |

## Version 2 (saved 2015-04-20, file NUS-ProjectPlan-2007.mpp)

Note of the change: Added all the work till date on proposal

Last finish 2015-05-11 → 2015-05-14 (+3d).

Added:

| ID | Task | Duration | Start | Finish | Predecessors | Resources |
| --- | --- | --- | --- | --- | --- | --- |
| 30 | UAT InfraStructure readiness and Availability | 0d | 2015-04-21 | 2015-04-21 | 11 | NUS |
| 32 | Verify the Dev Environment (Oracle instance running, firewall ports, remote access information, Software Image with location) | 0.5d | 2015-04-24 | 2015-04-24 | 20, 31 | i2s |
| 33 | Check VPN environment credentials and log into the Server | 0.5d | 2015-04-24 | 2015-04-24 | 32 | i2s |
| 35 | Deploy the sample process/workflow | 0.25d | 2015-04-29 | 2015-04-29 | 34 | i2s |
| 36 | UAT Preparation and execution of Test Scenario and test cases | 1d | 2015-04-29 | 2015-04-30 | 35 | i2s |
| 37 | UAT Env Summary report and Installation documentation | 0.5d | 2015-04-30 | 2015-04-30 | 36 | i2s |
| 41 | Prod InfraStructure readiness and Availability | 0d | 2015-04-21 | 2015-04-21 | 11 | NUS |
| 43 | Verify the Prod Environment (Oracle instance running, firewall ports, remote access information, Software Image with location) | 0.5d | 2015-04-27 | 2015-04-27 | 42 | i2s |
| 44 | Check VPN environment credentials and log into the Server for cluster environment | 0.5d | 2015-04-27 | 2015-04-27 | 43 | i2s |
| 45 | install and config system for cluster environment | 4d | 2015-04-28 | 2015-05-01 | 44 | i2s |
| 46 | Deploy the sample process/workflow | 0.5d | 2015-05-04 | 2015-05-04 | 45 | i2s |
| 47 | Prod Preparation and execution of Test Scenario and test cases | 2d | 2015-05-04 | 2015-05-06 | 46 | i2s |
| 48 | Prod Env Summary report and Installation documentation | 1d | 2015-05-06 | 2015-05-07 | 47 | i2s |

Removed: 36 install and config system

Changed:

| ID | Task | Start | Finish | Duration | Complete | Total float | Predecessors | Other |
| --- | --- | --- | --- | --- | --- | --- | --- | --- |
| 2 | **Overall** |  | 2015-05-11 → 2015-05-14 (+3d) | 21d → 23.5d | 14% → 13% |  |  |  |
| 18 | **Install & Config (DEV)** |  | 2015-04-30 → 2015-05-08 (+8d) | 6.75d → 12.5d |  |  |  |  |
| 20 | dev env setup |  |  |  |  |  | 19 → 19, 30, 41 |  |
| 27 | env testing | 2015-04-29 → 2015-05-07 (+8d) | 2015-04-30 → 2015-05-08 (+8d) |  |  | 7.25d → 4d | 26 → 26, 48, 37 |  |
| 28 | sign off | 2015-04-30 → 2015-05-08 (+8d) | 2015-04-30 → 2015-05-08 (+8d) |  |  | 7.25d → 4d |  |  |
| 29 | **Install & Config (UAT)** | 2015-04-23 → 2015-04-21 (-2d) |  | 8d → 8.75d |  |  |  |  |
| 34 | install and config system | 2015-04-24 → 2015-04-27 (+3d) | 2015-04-30 → 2015-04-28 (-2d) | 5d → 2d |  | 0d → 4.75d | 31 → 33 | resources none → i2s; baseline start 2015-04-24 → 2015-04-23; baseline finish 2015-04-30 → 2015-04-29 |
| 38 | env testing | 2015-05-01 → 2015-04-30 (-1d) |  |  |  | 0d → 7.75d | 34 → 37 |  |
| 39 | sign off |  |  |  |  | 0d → 7.75d |  | resources none → NUS |
| 40 | **Install & Config (PROD)** | 2015-04-24 → 2015-04-21 (-3d) | 2015-05-05 → 2015-05-08 (+3d) | 8d → 12.5d |  | 4d → 0d |  |  |
| 49 | env testing | 2015-05-05 → 2015-05-07 (+2d) | 2015-05-05 → 2015-05-08 (+3d) |  |  |  | 39 → 48 |  |
| 50 | sign off | 2015-05-05 → 2015-05-08 (+3d) | 2015-05-05 → 2015-05-08 (+3d) |  |  |  |  | resources none → NUS |
| 51 | **Acceptance Testing** | 2015-05-06 → 2015-05-08 (+2d) | 2015-05-11 → 2015-05-14 (+3d) |  |  |  |  |  |
| 52 | Acceptance testing | 2015-05-06 → 2015-05-08 (+2d) | 2015-05-07 → 2015-05-12 (+5d) |  |  |  |  |  |
| 53 | backup & recovery testing | 2015-05-08 → 2015-05-12 (+4d) | 2015-05-11 → 2015-05-14 (+3d) |  |  |  |  | resources none → NUS |
| 54 | Acceptance signoff | 2015-05-11 → 2015-05-14 (+3d) | 2015-05-11 → 2015-05-14 (+3d) |  |  |  |  | resources none → NUS |
| 55 | end | 2015-05-11 → 2015-05-14 (+3d) | 2015-05-11 → 2015-05-14 (+3d) |  |  |  |  |  |

## Version 3 (saved 2015-04-23, file NUS-BPM-v3-2007.mpp)

Note of the change: Added all the work till date on proposal

Last finish stays 2015-05-14.

Added:

| ID | Task | Duration | Start | Finish | Predecessors |
| --- | --- | --- | --- | --- | --- |
| 14 | coding | 7d | 2015-04-13 | 2015-04-21 |  |
| 15 | SIT | 3d | 2015-04-22 | 2015-04-24 | 14 |
| 16 | SIT in NUS | 2d | 2015-04-27 | 2015-04-28 | 15 |
| 18 | Verification of ADFS approach | 3d | 2015-04-20 | 2015-04-22 |  |

Removed: 14 delegation email integration; 19 Dev InfraStructure readiness and Availability

Changed:

| ID | Task | Start | Finish | Duration | Complete | Total float | Predecessors | Other |
| --- | --- | --- | --- | --- | --- | --- | --- | --- |
| 2 | **Overall** |  |  |  | 13% → 7% |  |  |  |
| 12 | **Development** | 2015-04-13 A → 2015-04-13 |  |  | 19% → 0% |  |  |  |
| 13 | **OOF integration** | 2015-04-13 A → 2015-04-13 | 2015-04-24 → 2015-04-28 (+4d) | 10d → 12d | 45% → 0% | 9.5d → 11.5d |  |  |
| 17 | **2FA integration** |  | 2015-04-28 → 2015-04-22 (-6d) | 7d → 3d |  | 7d → 15.5d |  |  |
| 21 | **Install & Config (DEV)** | 2015-04-21 → 2015-04-17 (-4d) | 2015-05-08 → 2015-04-29 (-9d) | 12.5d → 8.75d |  |  | 11 → none |  |
| 22 | dev env setup | 2015-04-22 → 2015-04-17 (-5d) | 2015-04-22 → 2015-04-17 (-5d) |  |  |  | Dev InfraStructure readiness and Availability, 33, 44 → none | constraint none → must start on 2015-04-17 |
| 23 | Verify the Dev Environment (Oracle instance running, firewall ports, remote access information, Software Image with location) | 2015-04-23 → 2015-04-22 (-1d) | 2015-04-23 → 2015-04-22 (-1d) |  |  | 5.75d → 10.75d | 22 → 22FS+2d | resources i2s → none |
| 24 | Check VPN environment credentials and log into the Server | 2015-04-23 → 2015-04-22 (-1d) | 2015-04-23 → 2015-04-22 (-1d) |  |  | 5.75d → 10.75d |  | resources i2s → none |
| 25 | install and config system | 2015-04-24 → 2015-04-23 (-1d) | 2015-04-27 → 2015-04-24 (-3d) |  |  | 5.75d → 10.75d |  | resources i2s → none |
| 26 | Deploy the sample process/workflow | 2015-04-28 → 2015-04-27 (-1d) | 2015-04-28 → 2015-04-27 (-1d) |  |  | 5.75d → 10.75d |  | resources i2s → none |
| 27 | Dev Preparation and execution of Test Scenario and test cases | 2015-04-28 → 2015-04-27 (-1d) | 2015-04-29 → 2015-04-28 (-1d) |  |  | 5.25d → 10.75d |  | resources i2s → none |
| 28 | Dev Env Summary report and Installation documentation | 2015-04-29 → 2015-04-28 (-1d) | 2015-04-29 → 2015-04-28 (-1d) |  |  | 5.25d → 10.75d |  | resources i2s → none |
| 29 | DEV env testing | 2015-05-07 → 2015-04-28 (-9d) | 2015-05-08 → 2015-04-29 (-9d) |  |  | 4d → 10.75d | 28, 50, 39 → 28 | was named env testing |
| 30 | sign off | 2015-05-08 → 2015-04-29 (-9d) | 2015-05-08 → 2015-04-29 (-9d) |  |  | 4d → 10.75d |  |  |
| 31 | **Install & Config (UAT)** | 2015-04-21 → 2015-04-20 (-1d) | 2015-05-04 → 2015-05-01 (-3d) | 8.75d → 9.75d |  |  |  |  |
| 32 | uat env setup | 2015-04-23 → 2015-04-20 (-3d) | 2015-04-23 → 2015-04-20 (-3d) |  |  |  |  |  |
| 33 | UAT InfraStructure readiness and Availability | 2015-04-21 → 2015-04-20 (-1d) | 2015-04-21 → 2015-04-20 (-1d) |  |  | 0d → 17.5d | 11 → 32 |  |
| 34 | Verify the Dev Environment (Oracle instance running, firewall ports, remote access information, Software Image with location) | 2015-04-24 → 2015-04-23 (-1d) | 2015-04-24 → 2015-04-23 (-1d) |  |  | 4.75d → 8.75d | 22, 32 → 32FS+2d | resources i2s → none |
| 35 | Check VPN environment credentials and log into the Server | 2015-04-24 → 2015-04-23 (-1d) | 2015-04-24 → 2015-04-23 (-1d) |  |  | 4.75d → 8.75d |  | resources i2s → none |
| 36 | install and config system | 2015-04-27 → 2015-04-24 (-3d) | 2015-04-28 → 2015-04-27 (-1d) |  |  | 4.75d → 8.75d |  | resources i2s → none |
| 37 | Deploy the sample process/workflow | 2015-04-29 → 2015-04-28 (-1d) | 2015-04-29 → 2015-04-28 (-1d) |  |  | 4.75d → 8.75d |  | resources i2s → none |
| 38 | UAT Preparation and execution of Test Scenario and test cases | 2015-04-29 → 2015-04-28 (-1d) | 2015-04-30 → 2015-04-29 (-1d) |  |  | 4.75d → 8.75d |  | resources i2s → none |
| 39 | UAT Env Summary report and Installation documentation | 2015-04-30 → 2015-04-29 (-1d) | 2015-04-30 → 2015-04-29 (-1d) |  |  | 4.75d → 8.75d |  | resources i2s → none |
| 40 | UAT env testing | 2015-04-30 → 2015-04-29 (-1d) | 2015-05-04 → 2015-05-01 (-3d) |  |  | 7.75d → 8.75d |  | was named env testing |
| 41 | sign off | 2015-05-04 → 2015-05-01 (-3d) | 2015-05-04 → 2015-05-01 (-3d) |  |  | 7.75d → 8.75d |  |  |
| 42 | **Install & Config (PROD)** |  |  | 12.5d → 13.5d |  |  |  |  |
| 43 | prod env setup | 2015-04-24 → 2015-04-21 (-3d) | 2015-04-24 → 2015-04-21 (-3d) |  |  |  |  |  |
| 44 | Prod InfraStructure readiness and Availability |  |  |  |  |  | 11 → 43 |  |
| 45 | Verify the Prod Environment (Oracle instance running, firewall ports, remote access information, Software Image with location) |  |  |  |  |  | 43 → 44FS+3d | resources i2s → none |
| 46 | Check VPN environment credentials and log into the Server for cluster environment |  |  |  |  |  |  | resources i2s → none |
| 47 | install and config system for cluster environment |  |  |  |  |  |  | resources i2s → none |
| 48 | Deploy the sample process/workflow |  |  |  |  |  |  | resources i2s → none |
| 49 | Prod Preparation and execution of Test Scenario and test cases |  |  |  |  |  |  | resources i2s → none |
| 50 | Prod Env Summary report and Installation documentation |  |  |  |  |  |  | resources i2s → none |

## Version 4 (data date 2015-05-07, saved 2015-05-07, file NUS-BPM-v3.mpp)

Note of the change: Added all the work till date on proposal

Last finish 2015-05-14 → 2015-07-06 (+53d). Complete tasks 1 → 12.

Added:

| ID | Task | Duration | Start | Finish | Predecessors | Constraint | Resources |
| --- | --- | --- | --- | --- | --- | --- | --- |
| 24 | Oracle Database Issue and Port Reconfiguration | 3d | 2015-04-30 A | 2015-05-04 A | 23 |  | Shailesh |
| 25 | Test case preparation | 2d | 2015-04-30 A | 2015-05-01 A | 23 |  | Padmini |
| 27 | Installation of process server cluster | 3d | 2015-05-04 A | 2015-05-07 A | 26 |  | Shailesh |
| 28 | Preparation of Installation Documentation | 2d | 2015-05-07 A | 2015-05-11 | 24, 27 |  | Rajasekar |
| 29 | Test case Execution | 2d | 2015-05-05 | 2015-05-07 | 26FS+1d |  | Padmini |
| 30 | Review of Installation procedure Document | 2d | 2015-05-11 | 2015-05-13 | 28 |  | NUS |
| 40 | Installaton of process server cluster environment | 3d | 2015-05-29 | 2015-06-03 | 39 |  | Shailesh |
| 43 | UAT Execution | 1d | 2015-06-04 | 2015-06-05 | 42 |  | Padmini |
| 44 | Preparation of UAT Installation Documentation | 2d | 2015-06-03 | 2015-06-05 | 40 |  | Rajasekar |
| 45 | Review incorporation on Installation | 1d | 2015-06-05 | 2015-06-08 | 44 |  | NUS |
| 55 | Preparation of Installation Documentation | 2d | 2015-06-22 | 2015-06-23 | 54 |  | Shailesh |
| 58 | Review incorporation on Installation | 2d | 2015-06-24 | 2015-06-25 | 55 |  | NUS |
| 62 | **Out of Office Development** | 13.5d | 2015-05-04 A | 2015-05-21 |  |  |  |
| 63 | Collect Requirement | 1d | 2015-05-04 A | 2015-05-04 A |  | start no earlier than 2015-05-04 | Arpita |
| 64 | Preparation of SOW | 1d | 2015-05-07 A | 2015-05-07 A | 63FS+2d |  | Krishna |
| 65 | Acceptance on SOW | 1d | 2015-05-08 | 2015-05-08 | 64 |  | NUS |
| 66 | Preparation of Design flow | 2d | 2015-05-11 | 2015-05-12 | 65 |  | Arpita |
| 67 | Development of flows and screens | 4d | 2015-05-13 | 2015-05-18 | 66 |  | Devika |
| 68 | Preparation of Test cases | 1d | 2015-05-19 | 2015-05-19 | 67 |  | Padmini |
| 69 | Deploy the flow in Development Environment | 0.25d | 2015-05-20 | 2015-05-20 | 68 |  | Arpita |
| 70 | Execution of test cases | 1d | 2015-05-20 | 2015-05-21 | 69 |  | Padmini |
| 71 | Executive Summary Report | 0.25d | 2015-05-21 | 2015-05-21 | 70 |  | Padmini |
| 72 | Verification of deployed flows | 0d | 2015-05-21 | 2015-05-21 | 71 |  | NUS |

Removed: 27 Dev Preparation and execution of Test Scenario and test cases

Changed:

| ID | Task | Start | Finish | Duration | Complete | Total float | Predecessors | Other |
| --- | --- | --- | --- | --- | --- | --- | --- | --- |
| 1 | start | 2015-04-13 A | 2015-04-13 A |  | 0% → 100% | 23.5d → none |  |  |
| 2 | **Overall** |  | 2015-05-14 → 2015-07-06 (+53d) | 23.5d → 60.5d | 7% → 17% |  |  |  |
| 6 | **Specification Confirmation** | 2015-04-13 A → 2015-04-13 |  |  | 36% → 0% | 16.5d → 0d |  |  |
| 7 | Requirement discussion | 2015-04-13 A → 2015-04-13 |  |  | 80% → 0% | 16.5d → 0d |  |  |
| 19 | **Install & Config (DEV)** | 2015-04-17 A | 2015-04-29 → 2015-05-15 (+16d) | 8.75d → 20.25d | 0% → 69% | 0d → 36.25d |  |  |
| 20 | dev env setup | 2015-04-17 A | 2015-04-17 A |  | 0% → 100% | 0d → none |  |  |
| 21 | Verify the Dev Environment (Oracle instance running, firewall ports, remote access information, Software Image with location) | 2015-04-22 A | 2015-04-22 A |  | 0% → 100% | 10.75d → none |  | resources none → Shailesh |
| 22 | Check VPN environment credentials and log into the Server | 2015-04-22 A | 2015-04-22 A |  | 0% → 100% | 10.75d → none |  | resources none → Shailesh |
| 23 | install instance cluster environment and config system | 2015-04-23 A | 2015-04-24 → 2015-04-29 A (+5d) | 2d → 5d | 0% → 100% | 10.75d → none |  | was named install and config system; resources none → Shailesh |
| 26 | Deploy the sample process/workflow | 2015-04-27 → 2015-05-04 A (+7d) | 2015-04-27 → 2015-05-04 A (+7d) |  | 0% → 100% | 10.75d → none | 23 → 25 | resources none → Shailesh |
| 31 | Dev Execution Summary Report | 2015-04-28 → 2015-05-13 (+15d) | 2015-04-28 → 2015-05-14 (+16d) | 0.5d → 1d |  | 10.75d → 0d | Dev Preparation and execution of Test Scenario and test cases → 28, 30 | was named Dev Env Summary report and Installation documentation; resources none → Padmini |
| 32 | DEV env testing | 2015-04-28 → 2015-05-14 (+16d) | 2015-04-29 → 2015-05-15 (+16d) |  |  | 10.75d → 35.25d |  |  |
| 33 | sign off | 2015-04-29 → 2015-05-15 (+16d) | 2015-04-29 → 2015-05-15 (+16d) |  |  | 10.75d → 35.25d |  | resources none → NUS |
| 34 | **Install & Config (UAT)** | 2015-04-20 → 2015-05-14 (+24d) | 2015-05-01 → 2015-06-10 (+40d) | 9.75d → 19.5d |  |  |  |  |
| 35 | uat env setup | 2015-04-20 → 2015-05-14 (+24d) | 2015-04-20 → 2015-05-18 (+28d) | 1d → 2d |  |  | 20 → 31 |  |
| 36 | UAT InfraStructure readiness and Availability | 2015-04-20 → 2015-05-18 (+28d) | 2015-04-20 → 2015-05-18 (+28d) |  |  | 17.5d → 35.25d |  |  |
| 37 | Verify the Dev Environment (Oracle instance running, firewall ports, remote access information, Software Image with location) | 2015-04-23 → 2015-05-20 (+27d) | 2015-04-23 → 2015-05-21 (+28d) | 0.5d → 1d |  | 8.75d → 0d |  | resources none → Shailesh |
| 38 | Check VPN environment credentials and log into the Server | 2015-04-23 → 2015-05-21 (+28d) | 2015-04-23 → 2015-05-22 (+29d) | 0.5d → 1d |  | 8.75d → 0d |  | resources none → Shailesh |
| 39 | install instance cluster environment and config system | 2015-04-24 → 2015-05-22 (+28d) | 2015-04-27 → 2015-05-29 (+32d) | 2d → 5d |  | 8.75d → 0d |  | was named install and config system; resources none → Shailesh |
| 41 | Deploy the sample process/workflow | 2015-04-28 → 2015-06-03 (+36d) | 2015-04-28 → 2015-06-03 (+36d) |  |  | 8.75d → 0d | 39 → 40 | resources none → Shailesh |
| 42 | UAT Test case updation | 2015-04-28 → 2015-06-03 (+36d) | 2015-04-29 → 2015-06-04 (+36d) |  |  | 8.75d → 18.5d |  | was named UAT Preparation and execution of Test Scenario and test cases; resources none → Padmini |
| 46 | UAT Env Summary report and Installation documentation | 2015-04-29 → 2015-06-08 (+40d) | 2015-04-29 → 2015-06-08 (+40d) |  |  | 8.75d → 17.75d | 42 → 43, 45 | resources none → Padmini |
| 47 | UAT env testing | 2015-04-29 → 2015-06-08 (+40d) | 2015-05-01 → 2015-06-10 (+40d) |  |  | 8.75d → 17.75d |  |  |
| 48 | sign off | 2015-05-01 → 2015-06-10 (+40d) | 2015-05-01 → 2015-06-10 (+40d) |  |  | 8.75d → 17.75d |  |  |
| 49 | **Install & Config (PROD)** | 2015-04-21 → 2015-06-03 (+43d) | 2015-05-08 → 2015-06-30 (+53d) | 13.5d → 19d |  |  |  |  |
| 50 | prod env setup | 2015-04-21 → 2015-06-03 (+43d) | 2015-04-21 → 2015-06-04 (+44d) |  |  |  | 35 → 41 |  |
| 51 | Prod InfraStructure readiness and Availability | 2015-04-21 → 2015-06-04 (+44d) | 2015-04-21 → 2015-06-04 (+44d) |  |  |  |  |  |
| 52 | Verify the Prod Environment (Oracle instance running, firewall ports, remote access information, Software Image with location) | 2015-04-27 → 2015-06-04 (+38d) | 2015-04-27 → 2015-06-05 (+39d) | 0.5d → 1d |  |  | 51FS+3d → 51 | resources none → Shailesh |
| 53 | Check VPN environment credentials and log into the Server for cluster environment | 2015-04-27 → 2015-06-05 (+39d) | 2015-04-27 → 2015-06-05 (+39d) |  |  |  |  | resources none → Shailesh |
| 54 | install and config system for cluster environment | 2015-04-28 → 2015-06-08 (+41d) | 2015-05-01 → 2015-06-19 (+49d) | 4d → 10d |  |  |  | resources none → Shailesh |
| 56 | Deploy the sample process/workflow | 2015-05-04 → 2015-06-24 (+51d) | 2015-05-04 → 2015-06-24 (+51d) |  |  |  | 54 → 55 | resources none → Shailesh |
| 57 | Prod Preparation and execution of Test Scenario and test cases | 2015-05-04 → 2015-06-24 (+51d) | 2015-05-06 → 2015-06-26 (+51d) |  |  |  |  | resources none → Padmini |
| 59 | Prod Env Summary report and Installation documentation | 2015-05-06 → 2015-06-26 (+51d) | 2015-05-07 → 2015-06-29 (+53d) |  |  |  |  | resources none → Padmini |
| 60 | env testing | 2015-05-07 → 2015-06-29 (+53d) | 2015-05-08 → 2015-06-30 (+53d) |  |  |  |  |  |
| 61 | sign off | 2015-05-08 → 2015-06-30 (+53d) | 2015-05-08 → 2015-06-30 (+53d) |  |  |  |  |  |
| 73 | **Training** | 2015-04-20 → 2015-05-25 (+35d) | 2015-04-24 → 2015-05-29 (+35d) |  |  | 13.5d → 25.5d |  |  |
| 74 | BPM Training | 2015-04-20 → 2015-05-25 (+35d) | 2015-04-24 → 2015-05-29 (+35d) |  |  | 13.5d → 24.5d |  | constraint start no earlier than 2015-04-20 → start no earlier than 2015-05-25 |
| 75 | **Acceptance Testing** | 2015-05-08 → 2015-06-30 (+53d) | 2015-05-14 → 2015-07-06 (+53d) |  |  |  |  |  |
| 76 | Acceptance testing | 2015-05-08 → 2015-06-30 (+53d) | 2015-05-12 → 2015-07-02 (+51d) |  |  |  |  |  |
| 77 | backup & recovery testing | 2015-05-12 → 2015-07-02 (+51d) | 2015-05-14 → 2015-07-06 (+53d) |  |  |  |  |  |
| 78 | Acceptance signoff | 2015-05-14 → 2015-07-06 (+53d) | 2015-05-14 → 2015-07-06 (+53d) |  |  |  |  |  |
| 79 | end | 2015-05-14 → 2015-07-06 (+53d) | 2015-05-14 → 2015-07-06 (+53d) |  |  |  |  |  |

## Version 5 (data date 2015-05-07, saved 2015-05-07, file NUS-BPM-v3-05072015.mpp)

Note of the change: Added all the work till date on proposal

Last finish 2015-07-06 → 2015-07-01 (-5d). Complete tasks 12 → 9.

Removed: 27 Installation of process server cluster; 40 Installaton of process server cluster environment

Changed:

| ID | Task | Start | Finish | Duration | Complete | Total float | Predecessors |
| --- | --- | --- | --- | --- | --- | --- | --- |
| 2 | **Overall** |  | 2015-07-06 → 2015-07-01 (-5d) | 60.5d → 57.5d | 17% → 13% |  |  |
| 19 | **Install & Config (DEV)** |  |  |  | 69% → 53% | 36.25d → 33.25d |  |
| 25 | Test case preparation | 2015-04-30 A → 2015-05-05 (+5d) | 2015-05-01 A → 2015-05-06 (+5d) |  | 100% → 0% | none → 39.25d | 23 → 24 |
| 26 | Deploy the sample process/workflow | 2015-05-04 A → 2015-05-07 (+3d) | 2015-05-04 A → 2015-05-07 (+3d) |  | 100% → 0% | none → 39.25d |  |
| 27 | Preparation of Installation Documentation |  |  |  |  |  | 24, Installation of process server cluster → 24 |
| 28 | Test case Execution | 2015-05-05 → 2015-05-08 (+3d) | 2015-05-07 → 2015-05-12 (+5d) |  |  | 41.25d → 39.25d |  |
| 33 | **Install & Config (UAT)** | 2015-05-14 → 2015-04-13 (-31d) | 2015-06-10 → 2015-06-04 (-6d) | 19.5d → 39d |  | 0d → 18.5d |  |
| 39 | Deploy the sample process/workflow | 2015-06-03 → 2015-05-29 (-5d) | 2015-06-03 → 2015-05-29 (-5d) |  |  |  | Installaton of process server cluster environment → 38 |
| 40 | UAT Test case updation | 2015-06-03 → 2015-05-29 (-5d) | 2015-06-04 → 2015-06-01 (-3d) |  |  |  |  |
| 41 | UAT Execution | 2015-06-04 → 2015-06-01 (-3d) | 2015-06-05 → 2015-06-02 (-3d) |  |  |  |  |
| 42 | Preparation of UAT Installation Documentation | 2015-06-03 → 2015-04-13 (-51d) | 2015-06-05 → 2015-04-14 (-52d) |  |  | 17.75d → 52d | Installaton of process server cluster environment → none |
| 43 | Review incorporation on Installation | 2015-06-05 → 2015-04-15 (-51d) | 2015-06-08 → 2015-04-15 (-54d) |  |  | 17.75d → 52d |  |
| 44 | UAT Env Summary report and Installation documentation | 2015-06-08 → 2015-06-02 (-6d) | 2015-06-08 → 2015-06-02 (-6d) |  |  | 17.75d → 18.5d |  |
| 45 | UAT env testing | 2015-06-08 → 2015-06-03 (-5d) | 2015-06-10 → 2015-06-04 (-6d) |  |  | 17.75d → 18.5d |  |
| 46 | sign off | 2015-06-10 → 2015-06-04 (-6d) | 2015-06-10 → 2015-06-04 (-6d) |  |  | 17.75d → 18.5d |  |
| 47 | **Install & Config (PROD)** | 2015-06-03 → 2015-05-29 (-5d) | 2015-06-30 → 2015-06-25 (-5d) |  |  |  |  |
| 48 | prod env setup | 2015-06-03 → 2015-05-29 (-5d) | 2015-06-04 → 2015-06-01 (-3d) |  |  |  |  |
| 49 | Prod InfraStructure readiness and Availability | 2015-06-04 → 2015-06-01 (-3d) | 2015-06-04 → 2015-06-01 (-3d) |  |  |  |  |
| 50 | Verify the Prod Environment (Oracle instance running, firewall ports, remote access information, Software Image with location) | 2015-06-04 → 2015-06-01 (-3d) | 2015-06-05 → 2015-06-02 (-3d) |  |  |  |  |
| 51 | Check VPN environment credentials and log into the Server for cluster environment | 2015-06-05 → 2015-06-02 (-3d) | 2015-06-05 → 2015-06-02 (-3d) |  |  |  |  |
| 52 | install and config system for cluster environment | 2015-06-08 → 2015-06-03 (-5d) | 2015-06-19 → 2015-06-16 (-3d) |  |  |  |  |
| 53 | Preparation of Installation Documentation | 2015-06-22 → 2015-06-17 (-5d) | 2015-06-23 → 2015-06-18 (-5d) |  |  |  |  |
| 54 | Deploy the sample process/workflow | 2015-06-24 → 2015-06-19 (-5d) | 2015-06-24 → 2015-06-19 (-5d) |  |  |  |  |
| 55 | Prod Preparation and execution of Test Scenario and test cases | 2015-06-24 → 2015-06-19 (-5d) | 2015-06-26 → 2015-06-23 (-3d) |  |  |  |  |
| 56 | Review incorporation on Installation | 2015-06-24 → 2015-06-19 (-5d) | 2015-06-25 → 2015-06-22 (-3d) |  |  |  |  |
| 57 | Prod Env Summary report and Installation documentation | 2015-06-26 → 2015-06-23 (-3d) | 2015-06-29 → 2015-06-24 (-5d) |  |  |  |  |
| 58 | env testing | 2015-06-29 → 2015-06-24 (-5d) | 2015-06-30 → 2015-06-25 (-5d) |  |  |  |  |
| 59 | sign off | 2015-06-30 → 2015-06-25 (-5d) | 2015-06-30 → 2015-06-25 (-5d) |  |  |  |  |
| 73 | **Acceptance Testing** | 2015-06-30 → 2015-06-25 (-5d) | 2015-07-06 → 2015-07-01 (-5d) |  |  |  |  |
| 74 | Acceptance testing | 2015-06-30 → 2015-06-25 (-5d) | 2015-07-02 → 2015-06-29 (-3d) |  |  |  |  |
| 75 | backup & recovery testing | 2015-07-02 → 2015-06-29 (-3d) | 2015-07-06 → 2015-07-01 (-5d) |  |  |  |  |
| 76 | Acceptance signoff | 2015-07-06 → 2015-07-01 (-5d) | 2015-07-06 → 2015-07-01 (-5d) |  |  |  |  |
| 77 | end | 2015-07-06 → 2015-07-01 (-5d) | 2015-07-06 → 2015-07-01 (-5d) |  |  |  |  |
